# Project Planing

Schedule from MS Project, 2014-09-22 to 2015-05-19, A marks actual dates.

## Calendars

- Standard: Mon-Fri 08:00-12:00, 13:00-17:00; Sat-Sun off.

## Resources

| Resource |
| --- |
| HungDv |
| TienBv |
| LeVh |
| ManhDD |
| LongNX |
| All |
| TL |
| TinhNT |
| HueNTN |
| Nhannv |
| TangNK |
| QuyLD |
| DungTD |
| Nhannv.HueNTN |
| 36 |
| MinhNQ |
| NamNH |

## Schedule

| ID | WBS | Task | Type | Duration | Start | Finish | Predecessors | Complete | Remaining | Total slack | Work |
| --- | --- | --- | --- | --- | --- | --- | --- | --- | --- | --- | --- |
| 1 | 1 | **MBGN Phase2 - 1** |  | 171.5d | 2014-09-22 A | 2015-05-19 |  | 23% | 131.69d | 0d | 24h |
| 2 | 1.1 | I. Study requirement |  | 1d | 2014-09-22 | 2014-09-22 |  |  |  | 27.5d |  |
| 3 | 1.2 | **II. Development** |  | 167.5d | 2014-09-23 A | 2015-05-14 |  | 25% | 125.62d | 0d |  |
| 4 | 1.2.1 | **1. In phiếu** |  | 6.5d | 2014-09-23 A | 2014-10-01 A | 2 | 100% |  |  |  |
| 5 | 1.2.1.1 | **Design** |  | 1.5d | 2014-09-23 A | 2014-09-24 A | 2 | 100% |  |  |  |
| 6 | 1.2.1.1.1 | Create Design |  | 1d | 2014-09-23 A | 2014-09-23 A | 2 | 100% |  |  |  |
| 7 | 1.2.1.1.2 | Review |  | 0.5d | 2014-09-24 A | 2014-09-24 A | 6 | 100% |  |  |  |
| 8 | 1.2.1.1.3 | Fix comment |  | 0.5d | 2014-09-24 A | 2014-09-24 A | 6 | 100% |  |  |  |
| 9 | 1.2.1.2 | **Coding + UT(nếu có)** |  | 3d | 2014-09-24 A | 2014-09-29 A | 5 | 100% |  |  |  |
| 10 | 1.2.1.2.1 | Coding |  | 2d | 2014-09-24 A | 2014-09-26 A |  | 100% |  |  |  |
| 11 | 1.2.1.2.2 | Review |  | 0.5d | 2014-09-26 A | 2014-09-26 A | 10 | 100% |  |  |  |
| 12 | 1.2.1.2.3 | Fix comment Review |  | 0.5d | 2014-09-29 A | 2014-09-29 A | 11 | 100% |  |  |  |
| 13 | 1.2.1.3 | **Test SST** |  | 2d | 2014-09-29 A | 2014-10-01 A | 9 | 100% |  |  |  |
| 14 | 1.2.1.3.1 | Create SST Script |  | 1d | 2014-09-29 A | 2014-09-30 A | 9 | 100% |  |  |  |
| 15 | 1.2.1.3.2 | Review |  | 1d | 2014-09-29 A | 2014-09-30 A | 9 | 100% |  |  |  |
| 16 | 1.2.1.3.3 | Fix comment |  | 1d | 2014-09-29 A | 2014-09-30 A | 9 | 100% |  |  |  |
| 17 | 1.2.1.3.4 | Execute SST |  | 1d | 2014-09-30 A | 2014-10-01 A | 16 | 100% |  |  |  |
| 18 | 1.2.1.3.5 | Fixbug SST |  | 1d | 2014-09-30 A | 2014-10-01 A | 16 | 100% |  |  |  |
| 19 | 1.2.2 | **2. Xuất kho** |  | 142.5d | 2014-10-01 A | 2015-04-17 | 4 | 15% | 121.12d | 0d |  |
| 20 | 1.2.2.1 | **Design** |  | 130.5d | 2014-10-01 A | 2015-04-01 |  | 60% | 52.2d | 0d |  |
| 21 | 1.2.2.1.1 | Create Design |  | 3d | 2014-10-01 A | 2014-10-06 A |  | 100% |  |  |  |
| 22 | 1.2.2.1.2 | Review | manual | 1d | 2015-04-01 | 2015-04-01 | 21 |  |  |  |  |
| 23 | 1.2.2.1.3 | Fix comment |  | 1d | 2014-10-06 | 2014-10-07 | 21 |  |  | 126.5d |  |
| 24 | 1.2.2.2 | **Coding + UT(nếu có)** |  | 9d | 2015-04-02 | 2015-04-14 | 20 |  |  | 0d |  |
| 25 | 1.2.2.2.1 | Coding |  | 7d | 2015-04-02 | 2015-04-10 |  |  |  | 0d |  |
| 26 | 1.2.2.2.2 | Review |  | 1d | 2015-04-13 | 2015-04-13 | 25 |  |  | 0d |  |
| 27 | 1.2.2.2.3 | Fix comment Review |  | 1d | 2015-04-14 | 2015-04-14 | 26 |  |  | 0d |  |

Notes:
- 4: 1. In đơn hŕng MH / 2. In phiếu giao nhận MH / 3. In phiếu giao nhận VC
- 19: 1. Xuất kho cho Khách lẻ & khách có trong hệ thống/ 2. In phiếu xuất kho

| ID | WBS | Task | Duration | Start | Finish | Predecessors | Total slack |
| --- | --- | --- | --- | --- | --- | --- | --- |
| 28 | 1.2.2.3 | **Test SST** | 3d | 2015-04-15 | 2015-04-17 | 24 | 0d |
| 29 | 1.2.2.3.1 | Create SST Script | 1d | 2015-04-15 | 2015-04-15 | 24 | 2d |
| 30 | 1.2.2.3.2 | Review | 1d | 2015-04-15 | 2015-04-15 | 24 | 2d |
| 31 | 1.2.2.3.3 | Fix comment | 1d | 2015-04-15 | 2015-04-15 | 24 | 0d |
| 32 | 1.2.2.3.4 | Execute SST | 2d | 2015-04-16 | 2015-04-17 | 31 | 0d |
| 33 | 1.2.2.3.5 | Fixbug SST | 1d | 2015-04-16 | 2015-04-16 | 31 | 1d |
| 34 | 1.2.3 | **4. Email maketing** | 8d | 2015-04-20 | 2015-04-29 | 19 | 0d |
| 35 | 1.2.3.1 | **Design** | 1.5d | 2015-04-20 | 2015-04-21 |  | 0d |
| 36 | 1.2.3.1.1 | Create Design | 1d | 2015-04-20 | 2015-04-20 |  | 0d |
| 37 | 1.2.3.1.2 | Review | 0.5d | 2015-04-21 | 2015-04-21 | 36 | 0d |
| 38 | 1.2.3.1.3 | Fix comment | 0.5d | 2015-04-21 | 2015-04-21 | 36 | 0d |
| 39 | 1.2.3.2 | **Coding + UT(nếu có)** | 4d | 2015-04-21 | 2015-04-27 | 35 | 0d |
| 40 | 1.2.3.2.1 | Coding | 2d | 2015-04-21 | 2015-04-23 |  | 0d |
| 41 | 1.2.3.2.2 | Review | 1d | 2015-04-23 | 2015-04-24 | 40 | 0d |
| 42 | 1.2.3.2.3 | Fix comment Review | 1d | 2015-04-24 | 2015-04-27 | 41 | 0d |
| 43 | 1.2.3.3 | **Test SST** | 2.5d | 2015-04-27 | 2015-04-29 | 39 | 0d |
| 44 | 1.2.3.3.1 | Create SST Script | 1d | 2015-04-27 | 2015-04-28 |  | 0d |
| 45 | 1.2.3.3.2 | Review | 0.5d | 2015-04-28 | 2015-04-28 | 44 | 1d |
| 46 | 1.2.3.3.3 | Fix comment | 0.5d | 2015-04-28 | 2015-04-28 | 44 | 0d |
| 47 | 1.2.3.3.4 | Execute SST | 1d | 2015-04-29 | 2015-04-29 | 46 | 0d |
| 48 | 1.2.3.3.5 | Fixbug SST | 1d | 2015-04-29 | 2015-04-29 | 46 | 0d |
| 49 | 1.2.4 | **3. Quản lý chi phí** | 8.5d | 2015-04-30 | 2015-05-12 | 34 | 0d |
| 50 | 1.2.4.1 | **Design** | 1.5d | 2015-04-30 | 2015-05-01 |  | 0d |
| 51 | 1.2.4.1.1 | Create Design | 1d | 2015-04-30 | 2015-04-30 |  | 0d |
| 52 | 1.2.4.1.2 | Review | 0.5d | 2015-05-01 | 2015-05-01 | 51 | 0d |
| 53 | 1.2.4.1.3 | Fix comment | 0.5d | 2015-05-01 | 2015-05-01 | 51 | 0d |

Notes:
- 34: Quản lư việc gửi email maketing
- 49: Quản lư việc gửi email maketing

| ID | WBS | Task | Duration | Start | Finish | Predecessors | Total slack | Resources | Work |
| --- | --- | --- | --- | --- | --- | --- | --- | --- | --- |
| 54 | 1.2.4.2 | **Coding + UT(nếu có)** | 4d | 2015-05-01 | 2015-05-07 | 50 | 0d |  |  |
| 55 | 1.2.4.2.1 | Coding | 2d | 2015-05-01 | 2015-05-05 |  | 0d |  |  |
| 56 | 1.2.4.2.2 | Review | 1d | 2015-05-05 | 2015-05-06 | 55 | 0d |  |  |
| 57 | 1.2.4.2.3 | Fix comment Review | 1d | 2015-05-06 | 2015-05-07 | 56 | 0d |  |  |
| 58 | 1.2.4.3 | **Test SST** | 3d | 2015-05-07 | 2015-05-12 | 54 | 0d |  |  |
| 59 | 1.2.4.3.1 | Create SST Script | 1d | 2015-05-07 | 2015-05-08 |  | 0d |  |  |
| 60 | 1.2.4.3.2 | Review | 0.5d | 2015-05-08 | 2015-05-08 | 59 | 0d |  |  |
| 61 | 1.2.4.3.3 | Fix comment | 0.5d | 2015-05-11 | 2015-05-11 | 60 | 0d |  |  |
| 62 | 1.2.4.3.4 | Execute SST | 1d | 2015-05-11 | 2015-05-12 | 61 | 0d |  |  |
| 63 | 1.2.4.3.5 | Fixbug SST | 1d | 2015-05-11 | 2015-05-12 | 61 | 0d |  |  |
| 64 | 1.2.5 | 5. update giao diện fontend | 2d | 2015-05-12 | 2015-05-14 | 49 | 0d |  |  |
| 65 | 1.3 | **III. Test ST** | 3d | 2015-05-14 | 2015-05-19 | 3 | 0d |  | 24h |
| 66 | 1.3.1 | Test | 1d | 2015-05-14 | 2015-05-15 |  | 0d | All | 8h |
| 67 | 1.3.2 | Refix | 1d | 2015-05-15 | 2015-05-18 | 66 | 0d | All | 8h |
| 68 | 1.3.3 | Buffer day | 1d | 2015-05-18 | 2015-05-19 | 67 | 0d | All | 8h |
