# Project Planing

Schedule from MS Project, 2014-05-01 to 2014-10-02, A marks actual dates.

## Calendars

- Standard: Mon-Fri 08:00-12:00, 13:00-17:00; Sat-Sun off.

## Resources

| Resource |
| --- |
| HungDv |
| TienBv |
| LeVh |
| ManhDD |
| LongNX |
| All |
| TL |
| TinhNT |
| HueNTN |
| Nhannv |
| TangNK |
| QuyLD |
| DungTD |
| Nhannv.HueNTN |
| 36 |
| MinhNQ |
| NamNH |

## Schedule

| ID | WBS | Task | Type | Duration | Start | Finish | Predecessors | Complete | Remaining | Total slack | Free slack | Resources | Work |
| --- | --- | --- | --- | --- | --- | --- | --- | --- | --- | --- | --- | --- | --- |
| 1 | 1 | **MBGN Phase** |  | 111d | 2014-05-01 A | 2014-10-02 |  | 25% | 83d | 0d |  |  | 40h |
| 2 | 1.1 | I. Study requirement |  | 3d | 2014-05-01 A | 2014-05-05 A |  | 100% |  |  |  |  |  |
| 3 | 1.2 | **II. Development** |  | 103d | 2014-05-06 A | 2014-09-25 |  | 24% | 78d | 0d |  |  |  |
| 4 | 1.2.1 | **A. Triển khai module nhân viên bán hàng** |  | 29d | 2014-05-06 | 2014-06-13 | 2 |  |  | 32d | 0d |  |  |
| 5 | 1.2.1.1 | 1. Phân quyền cho nhân viên bán hàng |  | 5d | 2014-05-06 | 2014-05-12 |  |  |  | 30d | 0d |  |  |
| 6 | 1.2.1.2 | 2. Phát triển chính sách cho nhân viên BH |  | 7d | 2014-05-13 | 2014-05-21 | 5 |  |  | 30d | 0d |  |  |
| 7 | 1.2.1.3 | 3. Phát triển báo cáo quản lý nhân viên BH |  | 10d | 2014-05-22 | 2014-06-04 | 6 |  |  | 30d | 0d |  |  |
| 8 | 1.2.1.4 | 4. Áp dụng chiết khấu tích lũy, tính điểm |  | 7d | 2014-06-05 | 2014-06-13 | 7 |  |  | 30d |  |  |  |
| 9 | 1.2.2 | **B. Quản lý kinh doanh** |  | 42d | 2014-06-16 | 2014-08-12 | 4 |  |  | 32d |  |  |  |
| 10 | 1.2.2.1 | 1. Hạch toán doanh thu công ty |  | 5d | 2014-06-16 | 2014-06-20 |  |  |  | 30d | 0d |  |  |
| 11 | 1.2.2.2 | 2. Hạch toán doanh thu Đại lý |  | 5d | 2014-06-23 | 2014-06-27 | 10 |  |  | 30d | 0d |  |  |
| 12 | 1.2.2.3 | 3. Hạch toán doanh thu nhân viên BH |  | 4d | 2014-06-30 | 2014-07-03 | 11 |  |  | 30d | 0d |  |  |
| 13 | 1.2.2.4 | 4. Xây dựng định mức chiết khấu chung cho nhân viên BH | milestone | 0d | 2014-07-03 | 2014-07-03 | 12 |  |  | 30d | 0d |  |  |
| 14 | 1.2.2.5 | 5. Phát triển module các loại chi phí |  | 8d | 2014-07-04 | 2014-07-15 | 13 |  |  | 30d | 0d |  |  |
| 15 | 1.2.2.6 | 6. Phát triển module xác định lợi nhuận: |  | 8d | 2014-07-16 | 2014-07-25 | 14 |  |  | 20d | 0d |  |  |
| 16 | 1.2.2.7 | 7. Phát triển báo cáo kinh doanh |  | 6d | 2014-07-28 | 2014-08-04 | 15 |  |  | 20d | 0d |  |  |
| 17 | 1.2.2.8 | 8. Báo cáo |  | 6d | 2014-08-05 | 2014-08-12 | 16 |  |  | 20d |  |  |  |
| 18 | 1.2.3 | C. Cập nhật giao diện web + giao diện Mobile |  | 25d | 2014-08-13 A | 2014-09-16 A | 9 | 100% |  |  |  |  |  |
| 19 | 1.2.4 | D. Module chăm sóc KH & marketing |  | 7d | 2014-09-17 | 2014-09-25 | 18 |  |  | 0d |  |  |  |
| 20 | 1.3 | **III. Test ST** |  | 5d | 2014-09-26 | 2014-10-02 | 3 |  |  | 0d |  |  | 40h |
| 21 | 1.3.1 | Test |  | 1d | 2014-09-26 | 2014-09-26 |  |  |  | 0d |  | All | 8h |
| 22 | 1.3.2 | Refix |  | 1d | 2014-09-29 | 2014-09-29 | 21 |  |  | 0d |  | All | 8h |
| 23 | 1.3.3 | Buffer day |  | 3d | 2014-09-30 | 2014-10-02 | 22 |  |  | 0d |  | All | 24h |

Notes:
- 5: 1. In đơn hŕng MH / 2. In phiếu giao nhận MH / 3. In phiếu giao nhận VC
- 10: Quản lư việc gửi email maketing
- 13: Pending
