# Project Planing

Schedule from MS Project, 2014-09-22 to 2014-11-21, A marks actual dates.

## Calendars

- Standard: Mon-Fri 08:00-12:00, 13:00-17:00; Sat-Sun off.

## Resources

| Resource |
| --- |
| HungDv |
| TienBv |
| LeVh |
| ManhDD |
| LongNX |
| All |
| TL |
| TinhNT |
| HueNTN |
| Nhannv |
| TangNK |
| QuyLD |
| DungTD |
| Nhannv.HueNTN |
| 36 |
| MinhNQ |
| NamNH |

## Schedule

| ID | WBS | Task | Duration | Start | Finish | Predecessors | Complete | Remaining | Total slack | Work |
| --- | --- | --- | --- | --- | --- | --- | --- | --- | --- | --- |
| 1 | 1 | **MBGN Phase2 - 1** | 44.5d | 2014-09-22 A | 2014-11-21 |  | 18% | 36.41d | 0d | 24h |
| 2 | 1.1 | I. Study requirement | 1d | 2014-09-22 | 2014-09-22 |  |  |  | 27.5d |  |
| 3 | 1.2 | **II. Development** | 40.5d | 2014-09-23 A | 2014-11-18 |  | 20% | 32.56d | 0d |  |
| 4 | 1.2.1 | **1. In phiếu** | 6.5d | 2014-09-23 A | 2014-10-01 A | 2 | 100% |  |  |  |
| 5 | 1.2.1.1 | **Design** | 1.5d | 2014-09-23 A | 2014-09-24 A | 2 | 100% |  |  |  |
| 6 | 1.2.1.1.1 | Create Design | 1d | 2014-09-23 A | 2014-09-23 A | 2 | 100% |  |  |  |
| 7 | 1.2.1.1.2 | Review | 0.5d | 2014-09-24 A | 2014-09-24 A | 6 | 100% |  |  |  |
| 8 | 1.2.1.1.3 | Fix comment | 0.5d | 2014-09-24 A | 2014-09-24 A | 6 | 100% |  |  |  |
| 9 | 1.2.1.2 | **Coding + UT(nếu có)** | 3d | 2014-09-24 A | 2014-09-29 A | 5 | 100% |  |  |  |
| 10 | 1.2.1.2.1 | Coding | 2d | 2014-09-24 A | 2014-09-26 A |  | 100% |  |  |  |
| 11 | 1.2.1.2.2 | Review | 0.5d | 2014-09-26 A | 2014-09-26 A | 10 | 100% |  |  |  |
| 12 | 1.2.1.2.3 | Fix comment Review | 0.5d | 2014-09-29 A | 2014-09-29 A | 11 | 100% |  |  |  |
| 13 | 1.2.1.3 | **Test SST** | 2d | 2014-09-29 A | 2014-10-01 A | 9 | 100% |  |  |  |
| 14 | 1.2.1.3.1 | Create SST Script | 1d | 2014-09-29 A | 2014-09-30 A | 9 | 100% |  |  |  |
| 15 | 1.2.1.3.2 | Review | 1d | 2014-09-29 A | 2014-09-30 A | 9 | 100% |  |  |  |
| 16 | 1.2.1.3.3 | Fix comment | 1d | 2014-09-29 A | 2014-09-30 A | 9 | 100% |  |  |  |
| 17 | 1.2.1.3.4 | Execute SST | 1d | 2014-09-30 A | 2014-10-01 A | 16 | 100% |  |  |  |
| 18 | 1.2.1.3.5 | Fixbug SST | 1d | 2014-09-30 A | 2014-10-01 A | 16 | 100% |  |  |  |
| 19 | 1.2.2 | **2. Xuất kho** | 15.5d | 2014-10-01 | 2014-10-22 | 4 |  |  | 0d |  |
| 20 | 1.2.2.1 | **Design** | 3.5d | 2014-10-01 | 2014-10-06 |  |  |  | 0d |  |
| 21 | 1.2.2.1.1 | Create Design | 3d | 2014-10-01 | 2014-10-06 |  |  |  | 0d |  |
| 22 | 1.2.2.1.2 | Review | 0.5d | 2014-10-06 | 2014-10-06 | 21 |  |  | 0d |  |
| 23 | 1.2.2.1.3 | Fix comment | 0.5d | 2014-10-06 | 2014-10-06 | 21 |  |  | 0d |  |
| 24 | 1.2.2.2 | **Coding + UT(nếu có)** | 9d | 2014-10-07 | 2014-10-17 | 20 |  |  | 0d |  |
| 25 | 1.2.2.2.1 | Coding | 7d | 2014-10-07 | 2014-10-15 |  |  |  | 0d |  |
| 26 | 1.2.2.2.2 | Review | 1d | 2014-10-16 | 2014-10-16 | 25 |  |  | 0d |  |
| 27 | 1.2.2.2.3 | Fix comment Review | 1d | 2014-10-17 | 2014-10-17 | 26 |  |  | 0d |  |

Notes:
- 4: 1. In đơn hŕng MH / 2. In phiếu giao nhận MH / 3. In phiếu giao nhận VC
- 19: 1. Xuất kho cho Khách lẻ & khách có trong hệ thống/ 2. In phiếu xuất kho

| ID | WBS | Task | Duration | Start | Finish | Predecessors | Total slack |
| --- | --- | --- | --- | --- | --- | --- | --- |
| 28 | 1.2.2.3 | **Test SST** | 3d | 2014-10-20 | 2014-10-22 | 24 | 0d |
| 29 | 1.2.2.3.1 | Create SST Script | 1d | 2014-10-20 | 2014-10-20 | 24 | 2d |
| 30 | 1.2.2.3.2 | Review | 1d | 2014-10-20 | 2014-10-20 | 24 | 2d |
| 31 | 1.2.2.3.3 | Fix comment | 1d | 2014-10-20 | 2014-10-20 | 24 | 0d |
| 32 | 1.2.2.3.4 | Execute SST | 2d | 2014-10-21 | 2014-10-22 | 31 | 0d |
| 33 | 1.2.2.3.5 | Fixbug SST | 1d | 2014-10-21 | 2014-10-21 | 31 | 1d |
| 34 | 1.2.3 | **4. Email maketing** | 8d | 2014-10-23 | 2014-11-03 | 19 | 0d |
| 35 | 1.2.3.1 | **Design** | 1.5d | 2014-10-23 | 2014-10-24 |  | 0d |
| 36 | 1.2.3.1.1 | Create Design | 1d | 2014-10-23 | 2014-10-23 |  | 0d |
| 37 | 1.2.3.1.2 | Review | 0.5d | 2014-10-24 | 2014-10-24 | 36 | 0d |
| 38 | 1.2.3.1.3 | Fix comment | 0.5d | 2014-10-24 | 2014-10-24 | 36 | 0d |
| 39 | 1.2.3.2 | **Coding + UT(nếu có)** | 4d | 2014-10-24 | 2014-10-30 | 35 | 0d |
| 40 | 1.2.3.2.1 | Coding | 2d | 2014-10-24 | 2014-10-28 |  | 0d |
| 41 | 1.2.3.2.2 | Review | 1d | 2014-10-28 | 2014-10-29 | 40 | 0d |
| 42 | 1.2.3.2.3 | Fix comment Review | 1d | 2014-10-29 | 2014-10-30 | 41 | 0d |
| 43 | 1.2.3.3 | **Test SST** | 2.5d | 2014-10-30 | 2014-11-03 | 39 | 0d |
| 44 | 1.2.3.3.1 | Create SST Script | 1d | 2014-10-30 | 2014-10-31 |  | 0d |
| 45 | 1.2.3.3.2 | Review | 0.5d | 2014-10-31 | 2014-10-31 | 44 | 1d |
| 46 | 1.2.3.3.3 | Fix comment | 0.5d | 2014-10-31 | 2014-10-31 | 44 | 0d |
| 47 | 1.2.3.3.4 | Execute SST | 1d | 2014-11-03 | 2014-11-03 | 46 | 0d |
| 48 | 1.2.3.3.5 | Fixbug SST | 1d | 2014-11-03 | 2014-11-03 | 46 | 0d |
| 49 | 1.2.4 | **3. Quản lý chi phí** | 8.5d | 2014-11-04 | 2014-11-14 | 34 | 0d |
| 50 | 1.2.4.1 | **Design** | 1.5d | 2014-11-04 | 2014-11-05 |  | 0d |
| 51 | 1.2.4.1.1 | Create Design | 1d | 2014-11-04 | 2014-11-04 |  | 0d |
| 52 | 1.2.4.1.2 | Review | 0.5d | 2014-11-05 | 2014-11-05 | 51 | 0d |
| 53 | 1.2.4.1.3 | Fix comment | 0.5d | 2014-11-05 | 2014-11-05 | 51 | 0d |

Notes:
- 34: Quản lư việc gửi email maketing
- 49: Quản lư việc gửi email maketing

| ID | WBS | Task | Duration | Start | Finish | Predecessors | Total slack | Resources | Work |
| --- | --- | --- | --- | --- | --- | --- | --- | --- | --- |
| 54 | 1.2.4.2 | **Coding + UT(nếu có)** | 4d | 2014-11-05 | 2014-11-11 | 50 | 0d |  |  |
| 55 | 1.2.4.2.1 | Coding | 2d | 2014-11-05 | 2014-11-07 |  | 0d |  |  |
| 56 | 1.2.4.2.2 | Review | 1d | 2014-11-07 | 2014-11-10 | 55 | 0d |  |  |
| 57 | 1.2.4.2.3 | Fix comment Review | 1d | 2014-11-10 | 2014-11-11 | 56 | 0d |  |  |
| 58 | 1.2.4.3 | **Test SST** | 3d | 2014-11-11 | 2014-11-14 | 54 | 0d |  |  |
| 59 | 1.2.4.3.1 | Create SST Script | 1d | 2014-11-11 | 2014-11-12 |  | 0d |  |  |
| 60 | 1.2.4.3.2 | Review | 0.5d | 2014-11-12 | 2014-11-12 | 59 | 0d |  |  |
| 61 | 1.2.4.3.3 | Fix comment | 0.5d | 2014-11-13 | 2014-11-13 | 60 | 0d |  |  |
| 62 | 1.2.4.3.4 | Execute SST | 1d | 2014-11-13 | 2014-11-14 | 61 | 0d |  |  |
| 63 | 1.2.4.3.5 | Fixbug SST | 1d | 2014-11-13 | 2014-11-14 | 61 | 0d |  |  |
| 64 | 1.2.5 | 5. update giao diện fontend | 2d | 2014-11-14 | 2014-11-18 | 49 | 0d |  |  |
| 65 | 1.3 | **III. Test ST** | 3d | 2014-11-18 | 2014-11-21 | 3 | 0d |  | 24h |
| 66 | 1.3.1 | Test | 1d | 2014-11-18 | 2014-11-19 |  | 0d | All | 8h |
| 67 | 1.3.2 | Refix | 1d | 2014-11-19 | 2014-11-20 | 66 | 0d | All | 8h |
| 68 | 1.3.3 | Buffer day | 1d | 2014-11-20 | 2014-11-21 | 67 | 0d | All | 8h |
