# VietPAY_PN_Project Schedule_v0.2.0

Schedule from MS Project, 2013-07-01 to 2013-08-14, A marks actual dates.

## Calendars

- Standard: Mon-Fri 08:00-12:00, 13:00-17:00; Sat-Sun off.

## Resources

| Resource |
| --- |
| HungDv |
| TienBv |
| LeVh |
| ManhDD |
| LongNX |
| All |
| TL |
| TinhNT |
| HueNTN |
| Nhannv |
| TangNK |
| QuyLD |
| DungTD |
| Nhannv.HueNTN |
| 36 |
| MinhNQ |
| NamNH |

## Schedule

| ID | WBS | Task | Type | Duration | Start | Finish | Predecessors | Complete | Remaining | Total slack | Resources | Work | Actual work |
| --- | --- | --- | --- | --- | --- | --- | --- | --- | --- | --- | --- | --- | --- |
| 1 | 1 | **MBGN** |  | 32.5d | 2013-07-01 A | 2013-08-14 |  | 13% | 28.24d | 0d |  | 548h | 76h |
| 2 | 1.1 | I. Tranning, tìm hiểu, chốt nghiệp vụ | manual | 1d | 2013-07-01 | 2013-07-01 |  |  |  |  |  |  |  |
| 3 | 1.2 | **II. Thiết kế** |  | 6d | 2013-07-02 A | 2013-07-09 |  | 61% | 2.33d | 0d |  | 56h | 44h |
| 4 | 1.2.1 | 1. Dựng môi trường phát triển |  | 1d | 2013-07-02 A | 2013-07-02 A | 2 | 100% |  |  | HungDv | 8h | 8h |
| 5 | 1.2.2 | 2. Thiết kế tổng quan mô hình hệ thống | manual | 1d | 2013-07-03 | 2013-07-03 | 4 |  |  |  |  |  |  |
| 6 | 1.2.3 | **3. Thiết kế chi tiết** |  | 5d | 2013-07-02 A | 2013-07-08 |  | 75% | 1.25d | 0d |  | 48h | 36h |
| 7 | 1.2.3.1 | 3.1 Thiết kế dữ liệu(database) | manual | 1d | 2013-07-04 A | 2013-07-04 A | 5 | 100% |  |  | HungDv | 8h | 8h |
| 8 | 1.2.3.2 | 3.2 Thiết kê chi tiết màn hình | manual | 2d | 2013-07-05 A | 2013-07-08 A | 7 | 100% |  |  | HungDv | 16h | 16h |
| 9 | 1.2.3.3 | 3.3 Thiết kế layout(Fontend + backend) | manual | 3d | 2013-07-02 A | 2013-07-04 | 2 | 50% | 1.5d |  | ManhDD | 24h | 12h |
| 10 | 1.2.4 | 4. Tổng duyệt thiết kế | manual | 1d | 2013-07-09 | 2013-07-09 | 6 |  |  |  |  |  |  |
| 11 | 1.3 | **III. Phát triển Fontend** |  | 11d | 2013-07-10 A | 2013-07-24 |  | 22% | 8.56d | 0d |  | 144h | 32h |
| 12 | 1.3.1 | **1. Đăng ký, kích hoạt thông tin khách hàng** |  | 2d | 2013-07-10 A | 2013-07-11 A |  | 100% |  |  |  | 16h | 16h |
| 13 | 1.3.1.1 | 1. Code Business | manual | 1d | 2013-07-10 A | 2013-07-10 A | 10 | 100% |  |  | ManhDD | 8h | 8h |
| 14 | 1.3.1.2 | 2. Code client | manual | 1d | 2013-07-11 A | 2013-07-11 A | 13 | 100% |  |  | ManhDD | 8h | 8h |
| 15 | 1.3.2 | **2. LogIn, LogOut** |  | 1d | 2013-07-11 A | 2013-07-11 A |  | 100% |  |  |  | 8h | 8h |
| 16 | 1.3.2.1 | 1. Code Business | manual | 0.5d | 2013-07-11 A | 2013-07-11 A | 13 | 100% |  |  | ManhDD | 4h | 4h |
| 17 | 1.3.2.2 | 2. Code client | manual | 0.5d | 2013-07-11 A | 2013-07-11 A | 16 | 100% |  |  | ManhDD | 4h | 4h |
| 18 | 1.3.3 | **3. Lấy lại mật khẩu** |  | 1d | 2013-07-11 A | 2013-07-12 A |  | 100% |  |  |  | 8h | 8h |
| 19 | 1.3.3.1 | 1. Code Business | manual | 0.5d | 2013-07-11 A | 2013-07-11 A | 16 | 100% |  |  | ManhDD | 4h | 4h |
| 20 | 1.3.3.2 | 2. Code client | manual | 0.5d | 2013-07-12 A | 2013-07-12 A | 19 | 100% |  |  | ManhDD | 4h | 4h |
| 21 | 1.3.4 | 4. Test + Refix task 1,2,3 | manual | 1d | 2013-07-12 | 2013-07-15 | 20 |  |  |  | MinhNQ | 8h |  |
| 22 | 1.3.5 | **5. Xây dựng trang sản phẩm** |  | 1.5d | 2013-07-15 | 2013-07-16 |  |  |  | 0d |  | 12h |  |
| 23 | 1.3.5.1 | 1. Code Business | manual | 0.5d | 2013-07-15 | 2013-07-15 | 21 |  |  |  | ManhDD | 4h |  |
| 24 | 1.3.5.2 | 2. Code client | manual | 1d | 2013-07-16 | 2013-07-16 | 23 |  |  |  | ManhDD | 8h |  |

| ID | WBS | Task | Type | Duration | Start | Finish | Predecessors | Total slack | Resources | Work |
| --- | --- | --- | --- | --- | --- | --- | --- | --- | --- | --- |
| 25 | 1.3.6 | **6. Xây dựng giỏ hàng** |  | 0.5d | 2013-07-17 | 2013-07-17 |  | 0d |  | 4h |
| 26 | 1.3.6.1 | 1. Code client | manual | 0.5d | 2013-07-17 | 2013-07-17 | 24 |  | ManhDD | 4h |
| 27 | 1.3.7 | **7. Báo giá link** |  | 1.5d | 2013-07-15 | 2013-07-16 |  | 0d |  | 12h |
| 28 | 1.3.7.1 | 1. Code Business | manual | 1d | 2013-07-15 | 2013-07-15 |  |  | HungDv | 8h |
| 29 | 1.3.7.2 | 2. Code client | manual | 0.5d | 2013-07-16 | 2013-07-16 | 28 |  | HungDv | 4h |
| 30 | 1.3.8 | **8. Xây dựng Module Order sản phẩm** |  | 3d | 2013-07-16 | 2013-07-19 |  | 0d |  | 24h |
| 31 | 1.3.8.1 | 1. Code Business | manual | 2d | 2013-07-16 | 2013-07-18 | 29 |  | HungDv | 16h |
| 32 | 1.3.8.2 | 2. Code client | manual | 1d | 2013-07-18 | 2013-07-19 | 31 |  | HungDv | 8h |
| 33 | 1.3.9 | **9. Xây dựng Module nhờ chuyển, gửi hàng** |  | 2.5d | 2013-07-19 | 2013-07-23 |  | 0d |  | 20h |
| 34 | 1.3.9.1 | 1. Code Business | manual | 0.5d | 2013-07-19 | 2013-07-19 | 32 |  | HungDv | 4h |
| 35 | 1.3.9.2 | 2. Code client | manual | 2d | 2013-07-22 | 2013-07-23 | 34 |  | HungDv | 16h |
| 36 | 1.3.10 | **10. Gửi thông báo thanh toán** |  | 1d | 2013-07-17 | 2013-07-18 |  | 0d |  | 8h |
| 37 | 1.3.10.1 | 1. Code Business | manual | 0.5d | 2013-07-17 | 2013-07-17 | 26 |  | ManhDD | 4h |
| 38 | 1.3.10.2 | 2. Code client | manual | 0.5d | 2013-07-18 | 2013-07-18 | 37 |  | ManhDD | 4h |
| 39 | 1.3.11 | 11. Test + Refix task 5-10 | manual | 1d | 2013-07-24 | 2013-07-24 | 35 |  | MinhNQ | 8h |
| 40 | 1.3.12 | 12. Xây dựng 1 số trang fontend khác | manual | 2d | 2013-07-18 | 2013-07-22 | 38 |  | ManhDD | 16h |
| 41 | 1.4 | **IV. Phát triển backend** |  | 19.5d | 2013-07-12 | 2013-08-08 |  | 0d |  | 308h |
| 42 | 1.4.1 | **1. Xây dựng các form danh mục** |  | 8d | 2013-07-12 | 2013-07-23 |  | 0d |  | 64h |
| 43 | 1.4.1.1 | 1. Danh mục đối tượng kh | manual | 2d | 2013-07-12 | 2013-07-15 |  |  | NamNH | 16h |
| 44 | 1.4.1.2 | 2. danh mục nhóm sản phẩm, loại sản phẩm | manual | 1d | 2013-07-16 | 2013-07-16 | 43 |  | NamNH | 8h |
| 45 | 1.4.1.3 | 3. quản lý thông tin sản phẩm | manual | 3d | 2013-07-17 | 2013-07-19 | 44 |  | NamNH | 24h |
| 46 | 1.4.1.4 | 4. Danh mục website mua hàng | manual | 1d | 2013-07-22 | 2013-07-22 | 45 |  | NamNH | 8h |
| 47 | 1.4.1.5 | 5. Danh mục account website mua hàng | manual | 1d | 2013-07-23 | 2013-07-23 | 46 |  | NamNH | 8h |
| 48 | 1.4.2 | **2. Xây dựng module Security** |  | 1d | 2013-07-20 | 2013-07-22 |  | 0d |  | 12h |
| 49 | 1.4.2.1 | 1. Code Business | manual | 0.5d | 2013-07-20 | 2013-07-20 |  |  | HungDv | 4h |
| 50 | 1.4.2.2 | 2. Code client | manual | 1d | 2013-07-22 | 2013-07-22 | 49 |  | HungDv | 8h |

| ID | WBS | Task | Type | Duration | Start | Finish | Predecessors | Total slack | Resources | Work |
| --- | --- | --- | --- | --- | --- | --- | --- | --- | --- | --- |
| 51 | 1.4.3 | **3. Quản lý thông tin khách hàng** |  | 3d | 2013-07-24 | 2013-07-26 |  | 0d |  | 24h |
| 52 | 1.4.3.1 | 1. Code Business | manual | 2d | 2013-07-24 | 2013-07-25 | 47 |  | NamNH | 16h |
| 53 | 1.4.3.2 | 2. Code client | manual | 1d | 2013-07-26 | 2013-07-26 | 52 |  | NamNH | 8h |
| 54 | 1.4.4 | **4. Quản lý tin tức** |  | 3d | 2013-07-29 | 2013-07-31 |  | 0d |  | 24h |
| 55 | 1.4.4.1 | 1. Code Business | manual | 1d | 2013-07-29 | 2013-07-29 | 53 |  | NamNH | 8h |
| 56 | 1.4.4.2 | 2. Code client | manual | 2d | 2013-07-30 | 2013-07-31 | 55 |  | NamNH | 16h |
| 57 | 1.4.5 | **5. Quản lý thiết lập chính sách phí** |  | 1.5d | 2013-07-23 | 2013-07-24 |  | 0d |  | 12h |
| 58 | 1.4.5.1 | 1. Code Business | manual | 0.5d | 2013-07-23 | 2013-07-23 | 50 |  | HungDv | 4h |
| 59 | 1.4.5.2 | 2. Code client | manual | 1d | 2013-07-23 | 2013-07-24 | 58 |  | HungDv | 8h |
| 60 | 1.4.6 | **6. Quản lý xử lý Order KH** |  | 3d | 2013-07-24 | 2013-07-29 |  | 0d |  | 40h |
| 61 | 1.4.6.1 | 1. Code Business | manual | 3d | 2013-07-24 | 2013-07-29 | 59 |  | HungDv | 24h |
| 62 | 1.4.6.2 | 2. Code client | manual | 2d | 2013-07-24 | 2013-07-26 | 59 |  | ManhDD | 16h |
| 63 | 1.4.7 | **7. Quản lý xử lý Order NN** |  | 3d | 2013-07-26 | 2013-07-31 |  | 0d |  | 32h |
| 64 | 1.4.7.1 | 1. Code Business | manual | 2d | 2013-07-29 | 2013-07-31 | 61 |  | HungDv | 16h |
| 65 | 1.4.7.2 | 2. Code client | manual | 2d | 2013-07-26 | 2013-07-30 | 62 |  | ManhDD | 16h |
| 66 | 1.4.8 | **8. Quản lý thanh toán** |  | 2d | 2013-07-31 | 2013-08-02 |  | 0d |  | 16h |
| 67 | 1.4.8.1 | 1. Quản lý thanh toán | manual | 0.5d | 2013-07-31 | 2013-07-31 | 64 |  | HungDv | 4h |
| 68 | 1.4.8.2 | 2. Lập hóa đơn thanh toán | manual | 1d | 2013-08-01 | 2013-08-01 | 67 |  | HungDv | 8h |
| 69 | 1.4.8.3 | 3. Khớp thông tin thanh toán | manual | 0.5d | 2013-08-02 | 2013-08-02 | 68 |  | HungDv | 4h |
| 70 | 1.4.9 | **9. Cập nhật trạng thái đơn hàng** |  | 0.5d | 2013-08-02 | 2013-08-02 |  | 0d |  | 8h |
| 71 | 1.4.9.1 | 1. Code Business | manual | 0.5d | 2013-08-02 | 2013-08-02 | 69 |  | HungDv | 4h |
| 72 | 1.4.9.2 | 2. Code client | manual | 0.5d | 2013-08-02 | 2013-08-02 | 69 |  | ManhDD | 4h |
| 73 | 1.4.10 | 10. Test + Refix task 1-8 | manual | 1d | 2013-08-05 | 2013-08-05 | 72 |  | MinhNQ | 8h |
| 74 | 1.4.11 | **11. Xác nhận thông tin giao hàng** |  | 2d | 2013-08-05 | 2013-08-06 |  | 0d |  | 16h |
| 75 | 1.4.11.1 | 1. Code Business | manual | 1d | 2013-08-05 | 2013-08-05 | 71 |  | HungDv | 8h |
| 76 | 1.4.11.2 | 2. Code client | manual | 1d | 2013-08-06 | 2013-08-06 | 75 |  | ManhDD | 8h |

| ID | WBS | Task | Type | Duration | Start | Finish | Predecessors | Total slack | Resources | Work |
| --- | --- | --- | --- | --- | --- | --- | --- | --- | --- | --- |
| 77 | 1.4.12 | **12. Quản lý kho** |  | 2d | 2013-08-06 | 2013-08-07 |  | 0d |  | 16h |
| 78 | 1.4.12.1 | 1. Quản lý nhập kho | manual | 2d | 2013-08-06 | 2013-08-07 | 75 |  | HungDv | 16h |
| 79 | 1.4.13 | **13. Báo cáo** |  | 1.5d | 2013-08-06 | 2013-08-07 |  | 0d |  | 12h |
| 80 | 1.4.13.1 | **13.1. Báo cáo Nhập - xuất - tồn** |  | 1.5d | 2013-08-06 | 2013-08-07 |  | 0d |  | 12h |
| 81 | 1.4.13.1.1 | 1. Code Business | manual | 1d | 2013-08-06 | 2013-08-06 | 75 |  | HungDv | 8h |
| 82 | 1.4.13.1.2 | 2. Code client | manual | 0.5d | 2013-08-07 | 2013-08-07 | 76 |  | HungDv | 4h |
| 83 | 1.4.14 | 14. Test + Refix task 9-12 | manual | 1d | 2013-08-07 | 2013-08-08 | 82 |  |  |  |
| 84 | 1.4.15 | **15. Module CRM** |  | 3d | 2013-08-01 | 2013-08-05 |  | 0d |  | 24h |
| 85 | 1.4.15.1 | 1. Code Business | manual | 1d | 2013-08-01 | 2013-08-01 | 56 |  | NamNH | 8h |
| 86 | 1.4.15.2 | 2. Code client | manual | 2d | 2013-08-02 | 2013-08-05 | 85 |  | NamNH | 16h |
| 87 | 1.5 | **V. Test UAT + Refix** |  | 5d | 2013-08-07 | 2013-08-14 |  | 0d |  | 40h |
| 88 | 1.5.1 | Test |  | 1d | 2013-08-07 | 2013-08-08 | 82 | 0d | All | 8h |
| 89 | 1.5.2 | Refix |  | 2d | 2013-08-08 | 2013-08-12 | 88 | 0d | All | 16h |
| 90 | 1.5.3 | Dự phòng |  | 2d | 2013-08-12 | 2013-08-14 | 89 | 0d | All | 16h |
